# Infrastrukturbereitstellung

Schedule from MS Project, 2004-01-01 to 2004-07-16.

## Calendars

- Standard: Mon-Fri 08:00-12:00, 13:00-17:00; Sat-Sun off.

## Resources

| Resource |
| --- |
| Systemberater |
| Projektmanagement |
| Bereitstellungsressourcen |
| Einkaufsabteilung |
| Management |

## Schedule

| ID | WBS | Task | Type | Duration | Start | Finish | Predecessors | Total slack | Resources | Work |
| --- | --- | --- | --- | --- | --- | --- | --- | --- | --- | --- |
| 1 | 1 | **Vorlage für Infrastrukturbereitstellung** |  | 141.25d | 2004-01-01 | 2004-07-16 |  | 0d |  | 2406h |
| 2 | 1.1 | **Umfang** |  | 4d | 2004-01-01 | 2004-01-06 |  | 0d |  | 32h |
| 3 | 1.1.1 | Ermitteln des Projektumfanges |  | 1d | 2004-01-01 | 2004-01-01 |  | 0d | Projektmanagement | 8h |
| 4 | 1.1.2 | Aufstellen der Projektfinanzierung |  | 1d | 2004-01-02 | 2004-01-02 | 3 | 0d | Projektmanagement | 8h |
| 5 | 1.1.3 | Festlegen der vorläufigen Ressourcen |  | 1d | 2004-01-05 | 2004-01-05 | 4 | 0d | Projektmanagement | 8h |
| 6 | 1.1.4 | Zuweisen der Kernressourcen |  | 1d | 2004-01-06 | 2004-01-06 | 5 | 0d | Projektmanagement | 8h |
| 7 | 1.1.5 | Umfang ist abgesteckt | milestone | 0d | 2004-01-06 | 2004-01-06 | 6 | 0d |  |  |
| 8 | 1.2 | **Analyse** |  | 30d | 2004-01-07 | 2004-02-17 |  | 0d |  | 840h |
| 9 | 1.2.1 | **Erfassen der aktuellen Infrastruktur** |  | 5d | 2004-01-07 | 2004-01-13 |  | 0d |  | 240h |
| 10 | 1.2.1.1 | Erfassen der Hardwareumgebung |  | 5d | 2004-01-07 | 2004-01-13 | 7 | 0d | Systemberater | 40h |
| 11 | 1.2.1.2 | Erfassen der Softwareumgebung |  | 5d | 2004-01-07 | 2004-01-13 | 7 | 0d | Systemberater | 40h |
| 12 | 1.2.1.3 | Erfassen der Kommunikationsumgebung |  | 5d | 2004-01-07 | 2004-01-13 | 7 | 0d | Systemberater | 40h |
| 13 | 1.2.1.4 | Erfassen der LAN/WAN-Verbindungen |  | 5d | 2004-01-07 | 2004-01-13 | 7 | 0d | Systemberater | 40h |
| 14 | 1.2.1.5 | Erfassen der Unterstützungsumgebung |  | 5d | 2004-01-07 | 2004-01-13 | 7 | 0d | Systemberater | 40h |
| 15 | 1.2.1.6 | Erfassen der Standortfaktoren |  | 5d | 2004-01-07 | 2004-01-13 | 7 | 0d | Systemberater | 40h |
| 16 | 1.2.1.7 | Erfassen der aktuellen Infrastruktur ist abgeschlossen | milestone | 0d | 2004-01-13 | 2004-01-13 | 10, 11, 12, 13, 14, 15 | 0d |  |  |
| 17 | 1.2.2 | Benennen der Geschäftsvorgaben: Ziele/Richtung/zukünftige Ziele |  | 10d | 2004-01-14 | 2004-01-27 | 16 | 0d | Projektmanagement | 80h |
| 18 | 1.2.3 | **Festlegen der Zielvorgaben für Verbesserungen** |  | 5d | 2004-01-28 | 2004-02-03 |  | 0d |  | 240h |
| 19 | 1.2.3.1 | Festlegen der Hardwareverbesserungen |  | 5d | 2004-01-28 | 2004-02-03 | 17 | 0d | Systemberater | 40h |
| 20 | 1.2.3.2 | Festlegen der Softwareverbesserungen |  | 5d | 2004-01-28 | 2004-02-03 | 17 | 0d | Systemberater | 40h |
| 21 | 1.2.3.3 | Festlegen der Kommunikationsanforderungen |  | 5d | 2004-01-28 | 2004-02-03 | 17 | 0d | Systemberater | 40h |
| 22 | 1.2.3.4 | Benennen der Verbesserungen/Probleme der LAN/WAN-Verbindungen |  | 5d | 2004-01-28 | 2004-02-03 | 17 | 0d | Systemberater | 40h |
| 23 | 1.2.3.5 | Benennen der Verbesserungen/Erweiterungen der Unterstützungsumgebung |  | 5d | 2004-01-28 | 2004-02-03 | 17 | 0d | Systemberater | 40h |
| 24 | 1.2.3.6 | Benennen von negativen Auswirkungen der Standortfaktoren |  | 5d | 2004-01-28 | 2004-02-03 | 17 | 0d | Systemberater | 40h |
| 25 | 1.2.3.7 | Benennen der Zielbereiche für Verbesserungen | milestone | 0d | 2004-02-03 | 2004-02-03 | 19, 20, 21, 22, 23, 24 | 0d |  |  |
| 26 | 1.2.4 | Definieren der Systemanforderungen |  | 5d | 2004-02-04 | 2004-02-10 | 25 | 0d | Systemberater | 40h |
| 27 | 1.2.5 | Definieren von Leistungszielvorgaben |  | 5d | 2004-02-11 | 2004-02-17 | 26 | 0d | Systemberater | 40h |

| ID | WBS | Task | Type | Duration | Start | Finish | Predecessors | Total slack | Free slack | Resources | Work |
| --- | --- | --- | --- | --- | --- | --- | --- | --- | --- | --- | --- |
| 28 | 1.2.6 | **Auswerten der Anbieter aktueller Marktlösungen** |  | 5d | 2004-02-04 | 2004-02-10 |  | 5d |  |  | 200h |
| 29 | 1.2.6.1 | Hardwareanbieter |  | 5d | 2004-02-04 | 2004-02-10 | 25 | 5d | 0d | Einkaufsabteilung | 40h |
| 30 | 1.2.6.2 | Softwareanbieter |  | 5d | 2004-02-04 | 2004-02-10 | 25 | 5d | 0d | Einkaufsabteilung | 40h |
| 31 | 1.2.6.3 | Anbieter von Kommunikationstechnik |  | 5d | 2004-02-04 | 2004-02-10 | 25 | 5d | 0d | Einkaufsabteilung | 40h |
| 32 | 1.2.6.4 | Entwurfspartner |  | 5d | 2004-02-04 | 2004-02-10 | 25 | 5d | 0d | Einkaufsabteilung | 40h |
| 33 | 1.2.6.5 | Implementierungspartner |  | 5d | 2004-02-04 | 2004-02-10 | 25 | 5d | 0d | Einkaufsabteilung | 40h |
| 34 | 1.2.6.6 | Auswerten der Anbieter aktueller Marktlösungen ist abgeschlossen | milestone | 0d | 2004-02-10 | 2004-02-10 | 29, 30, 31, 32, 33 | 5d |  |  |  |
| 35 | 1.2.7 | Analyse ist abgeschlossen | milestone | 0d | 2004-02-17 | 2004-02-17 | 34, 27 | 0d |  |  |  |
| 36 | 1.3 | **Entwurf** |  | 27d | 2004-02-18 | 2004-03-25 |  | 0d |  |  | 648h |
| 37 | 1.3.1 | Reservieren der erforderlichen Systemberaterressourcen |  | 3d | 2004-02-18 | 2004-02-20 | 35 | 0d |  | Projektmanagement | 24h |
| 38 | 1.3.2 | **Erstellen eines vorläufigen Infrastrukturentwurfs** |  | 5d | 2004-02-23 | 2004-02-27 |  | 0d |  |  | 200h |
| 39 | 1.3.2.1 | Vorläufiger Hardwareentwurf |  | 5d | 2004-02-23 | 2004-02-27 | 37 | 0d |  | Systemberater | 40h |
| 40 | 1.3.2.2 | Vorläufiger Softwareentwurf |  | 5d | 2004-02-23 | 2004-02-27 | 37 | 0d |  | Systemberater | 40h |
| 41 | 1.3.2.3 | Vorläufiger Entwurf der Kommunikationstechnik |  | 5d | 2004-02-23 | 2004-02-27 | 37 | 0d |  | Systemberater | 40h |
| 42 | 1.3.2.4 | Vorläufiger Entwurf für die LAN/WAN-Verbindungen |  | 5d | 2004-02-23 | 2004-02-27 | 37 | 0d |  | Systemberater | 40h |
| 43 | 1.3.2.5 | Vorläufiger Entwurf für die Unterstützungsumgebung |  | 5d | 2004-02-23 | 2004-02-27 | 37 | 0d |  | Systemberater | 40h |
| 44 | 1.3.2.6 | Erstellen des vorläufigen Infrastrukturentwurfs ist abgeschlossen | milestone | 0d | 2004-02-27 | 2004-02-27 | 39, 40, 41, 42, 43 | 0d |  |  |  |
| 45 | 1.3.3 | Auswertung des vorläufigen Infrastrukturentwurfs |  | 2d | 2004-03-01 | 2004-03-02 | 44 | 0d |  | Projektmanagement; Management | 32h |
| 46 | 1.3.4 | Erhalten von Feedback/Anregungen zum Entwurf |  | 2d | 2004-03-03 | 2004-03-04 | 45 | 0d |  | Projektmanagement; Management | 32h |
| 47 | 1.3.5 | **Erstellen des detaillierten Infrastrukturentwurfs** |  | 5d | 2004-03-05 | 2004-03-11 |  | 0d |  |  | 200h |
| 48 | 1.3.5.1 | Erstellen des detaillierten Hardwareentwurfs |  | 5d | 2004-03-05 | 2004-03-11 | 46 | 0d |  | Systemberater | 40h |
| 49 | 1.3.5.2 | Erstellen des detaillierten Softwareentwurfs |  | 5d | 2004-03-05 | 2004-03-11 | 46 | 0d |  | Systemberater | 40h |
| 50 | 1.3.5.3 | Erstellen des detaillierten Entwurfs der Kommunikationstechnik |  | 5d | 2004-03-05 | 2004-03-11 | 46 | 0d |  | Systemberater | 40h |
| 51 | 1.3.5.4 | Erstellen des detaillierten Entwurfs für die LAN/WAN-Verbindungen |  | 5d | 2004-03-05 | 2004-03-11 | 46 | 0d |  | Systemberater | 40h |
| 52 | 1.3.5.5 | Erstellen des detaillierten Entwurfs für die Unterstützungsumgebung |  | 5d | 2004-03-05 | 2004-03-11 | 46 | 0d |  | Systemberater | 40h |
| 53 | 1.3.5.6 | Erstellen des detaillierten Infrastrukturentwurfs ist abgeschlossen | milestone | 0d | 2004-03-11 | 2004-03-11 | 48, 49, 50, 51, 52 | 0d |  |  |  |
| 54 | 1.3.6 | Ausrichten des lang-/kurzfristigen Infrastrukturentwurfs auf die Unternehmensziele |  | 10d | 2004-03-12 | 2004-03-25 | 53 | 0d |  | Systemberater; Projektmanagement | 160h |
| 55 | 1.3.7 | Entwurf ist abgeschlossen | milestone | 0d | 2004-03-25 | 2004-03-25 | 54 | 0d |  |  |  |

| ID | WBS | Task | Type | Duration | Start | Finish | Predecessors | Total slack | Resources | Work |
| --- | --- | --- | --- | --- | --- | --- | --- | --- | --- | --- |
| 56 | 1.4 | **Kostenrahmen** |  | 16d | 2004-03-26 | 2004-04-16 |  | 0d |  | 168h |
| 57 | 1.4.1 | Aufstellen des Budgets anhand des detaillierten Infrastrukturentwurfs |  | 5d | 2004-03-26 | 2004-04-01 | 55 | 0d | Projektmanagement | 40h |
| 58 | 1.4.2 | Anpassen der Budgetanforderungen an die Unternehmensziele |  | 5d | 2004-03-30 | 2004-04-06 | 57FS-5% | 0d | Projektmanagement | 40h |
| 59 | 1.4.3 | Anpassen der Budgetanforderungen an die zeitlichen Vorgaben für die Infrastrukturbereitstellung |  | 5d | 2004-04-02 | 2004-04-08 | 58FS-5% | 0d | Projektmanagement | 40h |
| 60 | 1.4.4 | Vorstellen der lang-/kurzfristigen Budgetanforderungen |  | 3d | 2004-04-09 | 2004-04-13 | 59 | 0d | Projektmanagement | 24h |
| 61 | 1.4.5 | Sicherstellen der mehrphasigen/jährlichen Finanzierung der Hauptschritte |  | 3d | 2004-04-14 | 2004-04-16 | 60 | 0d | Projektmanagement | 24h |
| 62 | 1.4.6 | Budget ist abgeschlossen | milestone | 0d | 2004-04-16 | 2004-04-16 | 61 | 0d |  |  |
| 63 | 1.5 | **Beendigung/Bestätigung** |  | 17.5d | 2004-04-19 | 2004-05-12 |  | 0d |  | 140h |
| 64 | 1.5.1 | Zuteilen von Ressourcen auf Basis von genehmigten Schritten |  | 5d | 2004-04-19 | 2004-04-23 | 62 | 0d | Projektmanagement | 40h |
| 65 | 1.5.2 | Beenden des detaillierten Entwurfs auf Basis von Budgetüberlegungen |  | 2d | 2004-04-26 | 2004-04-27 | 64 | 0d | Projektmanagement | 16h |
| 66 | 1.5.3 | Entwickeln der detaillierten Implementierungsstrategie |  | 5d | 2004-04-28 | 2004-05-04 | 65 | 0d | Bereitstellungsressourcen | 40h |
| 67 | 1.5.4 | Überprüfen der Implementierungsstrategie in einer Testumgebung |  | 3d | 2004-05-05 | 2004-05-07 | 66 | 0d | Bereitstellungsressourcen | 24h |
| 68 | 1.5.5 | Anpassen der Implementierungsstrategie unter Berücksichtigung anderer Aktivitäten |  | 2d | 2004-05-10 | 2004-05-11 | 67 | 0d | Bereitstellungsressourcen | 16h |
| 69 | 1.5.6 | Einholen der Genehmigung, um fortfahren zu können |  | 4h | 2004-05-12 | 2004-05-12 | 68 | 0d | Projektmanagement | 4h |
| 70 | 1.5.7 | Beendigung/Bestätigung ist abgeschlossen | milestone | 0d | 2004-05-12 | 2004-05-12 | 69 | 0d |  |  |
| 71 | 1.6 | **Bereitstellung** |  | 43.75d | 2004-05-12 | 2004-07-13 |  | 0d |  | 506h |
| 72 | 1.6.1 | **Logistik** |  | 8d | 2004-05-12 | 2004-05-24 |  | 0d |  | 128h |
| 73 | 1.6.1.1 | Einteilen der Bereitstellungsressourcen |  | 5d | 2004-05-12 | 2004-05-19 | 70 | 0d | Projektmanagement; Bereitstellungsressourcen | 80h |
| 74 | 1.6.1.2 | Unterweisen der Bereitstellungsressourcen in der Bereitstellungsvorgehensweise |  | 3d | 2004-05-19 | 2004-05-24 | 73 | 0d | Projektmanagement; Bereitstellungsressourcen | 48h |
| 75 | 1.6.1.3 | Analyse/Logistik ist abgeschlossen | milestone | 0d | 2004-05-24 | 2004-05-24 | 74 | 0d |  |  |
| 76 | 1.6.2 | **Pilotphase** |  | 10.5d | 2004-05-24 | 2004-06-07 |  | 0d |  | 168h |
| 77 | 1.6.2.1 | Auswählen der bereitzustellenden Infrastrukturkomponente |  | 1d | 2004-05-24 | 2004-05-25 | 75 | 0d | Projektmanagement; Bereitstellungsressourcen | 16h |
| 78 | 1.6.2.2 | Überprüfen der Aufgaben und Zeitvorgaben des Bereitstellungsteams |  | 2d | 2004-05-25 | 2004-05-27 | 77 | 0d | Projektmanagement; Bereitstellungsressourcen | 32h |
| 79 | 1.6.2.3 | Mitteilung der Auswirkung an die betroffenen Personen |  | 2h | 2004-05-27 | 2004-05-27 | 78 | 0d | Projektmanagement; Bereitstellungsressourcen | 4h |
| 80 | 1.6.2.4 | Bereitstellen der Infrastrukturkomponente |  | 3d | 2004-05-27 | 2004-06-01 | 79 | 0d | Projektmanagement; Bereitstellungsressourcen | 48h |
| 81 | 1.6.2.5 | Testen der Infrastrukturkomponenten |  | 1d | 2004-06-01 | 2004-06-02 | 80 | 0d | Projektmanagement; Bereitstellungsressourcen | 16h |
| 82 | 1.6.2.6 | Freigeben für Produktions-/Betriebsumgebung |  | 2h | 2004-06-02 | 2004-06-02 | 81 | 0d | Projektmanagement; Bereitstellungsressourcen | 4h |
| 83 | 1.6.2.7 | Sammeln von Feedback |  | 2d | 2004-06-03 | 2004-06-04 | 82 | 0d | Projektmanagement; Bereitstellungsressourcen | 32h |
| 84 | 1.6.2.8 | Auswerten des Feedbacks der Pilotphase |  | 1d | 2004-06-07 | 2004-06-07 | 83 | 0d | Projektmanagement; Bereitstellungsressourcen | 16h |
| 85 | 1.6.2.9 | Pilotphase ist abgeschlossen | milestone | 0d | 2004-06-07 | 2004-06-07 | 84 | 0d |  |  |
| 86 | 1.6.3 | Feststellen der Bereitschaft zur Fortsetzung |  | 1d | 2004-06-08 | 2004-06-08 | 85 | 0d | Projektmanagement; Management | 16h |

| ID | WBS | Task | Type | Duration | Start | Finish | Predecessors | Total slack | Resources | Work |
| --- | --- | --- | --- | --- | --- | --- | --- | --- | --- | --- |
| 87 | 1.6.4 | **Eigentliche Bereitstellung** |  | 24.25d | 2004-06-09 | 2004-07-13 |  | 0d |  | 194h |
| 88 | 1.6.4.1 | Überprüfen der Aufgaben und Zeitvorgaben des Bereitstellungsteams |  | 5d | 2004-06-09 | 2004-06-15 | 86 | 0d | Bereitstellungsressourcen | 40h |
| 89 | 1.6.4.2 | Mitteilung der Auswirkung an die betroffenen Personen |  | 2h | 2004-06-16 | 2004-06-16 | 88 | 0d | Bereitstellungsressourcen | 2h |
| 90 | 1.6.4.3 | Bereitstellen der Infrastrukturkomponenten |  | 10d | 2004-06-16 | 2004-06-30 | 89 | 0d | Bereitstellungsressourcen | 80h |
| 91 | 1.6.4.4 | Testen der Infrastrukturkomponenten |  | 5d | 2004-06-30 | 2004-07-07 | 90 | 0d | Bereitstellungsressourcen | 40h |
| 92 | 1.6.4.5 | Freigeben für Produktions-/Betriebsumgebung |  | 1d | 2004-07-07 | 2004-07-08 | 91 | 0d | Bereitstellungsressourcen | 8h |
| 93 | 1.6.4.6 | Sammeln von Feedback |  | 3d | 2004-07-08 | 2004-07-13 | 92 | 0d | Bereitstellungsressourcen | 24h |
| 94 | 1.6.4.7 | Eigentliche Bereitstellung ist abgeschlossen | milestone | 0d | 2004-07-13 | 2004-07-13 | 93 | 0d |  |  |
| 95 | 1.7 | **Nachbereitung der Implementierung** |  | 3d | 2004-07-13 | 2004-07-16 |  | 0d |  | 72h |
| 96 | 1.7.1 | Dokumentieren des Erfahrungsberichts |  | 1d | 2004-07-13 | 2004-07-14 | 94 | 0d | Systemberater; Projektmanagement; Bereitstellungsressourcen | 24h |
| 97 | 1.7.2 | Verteilen an die Teammitglieder |  | 1d | 2004-07-14 | 2004-07-15 | 96 | 0d | Systemberater; Projektmanagement; Bereitstellungsressourcen | 24h |
| 98 | 1.7.3 | Zusammenstellen des Softwarewartungsteams |  | 1d | 2004-07-15 | 2004-07-16 | 97 | 0d | Systemberater; Projektmanagement; Bereitstellungsressourcen | 24h |
| 99 | 1.7.4 | Nachbereitung der Implementierung ist abgeschlossen | milestone | 0d | 2004-07-16 | 2004-07-16 | 98 | 0d |  |  |
| 100 | 1.8 | Vorlage für Infrastrukturbereitstellung ist abgeschlossen | milestone | 0d | 2004-07-16 | 2004-07-16 | 99 | 0d |  |  |
