# MSF Anwendungsentwicklung

Schedule from MS Project, 2004-01-01 to 2005-02-16.

## Calendars

- Standard: Mon-Fri 08:00-12:00, 13:00-17:00; Sat-Sun off.

## Resources

| Resource |
| --- |
| Programmmanagement |
| Produktmanagement |
| Entwicklung |
| Testen |
| Logistikmanagement |
| Benutzerschulung |
| Software Service |
| Kunde |

## Schedule

| ID | WBS | Task | Type | Duration | Start | Finish | Predecessors | Total slack | Free slack | Resources | Work |
| --- | --- | --- | --- | --- | --- | --- | --- | --- | --- | --- | --- |
| 1 | 1 | **Projektbeginn** |  | 6d | 2004-01-01 | 2004-01-08 |  | 0d |  | Produktmanagement | 368h |
| 2 | 1.1 | **Zusammenstellen des Teams** |  | 6d | 2004-01-01 | 2004-01-08 |  | 0d |  |  | 320h |
| 3 | 1.1.1 | Definieren der Teamrollen |  | 2d | 2004-01-01 | 2004-01-02 |  | 0d |  | Programmmanagement; Produktmanagement; Entwicklung; Testen; Logistikmanagement | 80h |
| 4 | 1.1.2 | Ermitteln der erforderlichen Kenntnisse |  | 2d | 2004-01-01 | 2004-01-02 |  | 0d |  | Programmmanagement; Produktmanagement; Entwicklung; Testen; Logistikmanagement | 80h |
| 5 | 1.1.3 | Ermitteln der Ressourcen |  | 2d | 2004-01-05 | 2004-01-06 | 4, 3 | 0d |  | Programmmanagement; Produktmanagement; Entwicklung; Testen; Logistikmanagement | 80h |
| 6 | 1.1.4 | Zuweisen von Rollen zu Ressourcen |  | 2d | 2004-01-07 | 2004-01-08 | 5 | 0d |  | Programmmanagement; Produktmanagement; Entwicklung; Testen; Logistikmanagement | 80h |
| 7 | 1.1.5 | Team ist zusammengestellt | milestone | 0d | 2004-01-08 | 2004-01-08 | 6 | 0d |  |  |  |
| 8 | 2 | **Projektbeschreibung** |  | 44d | 2004-01-09 | 2004-03-10 | 7 | 0d |  | Produktmanagement | 1222.4h |
| 9 | 2.1 | Definieren der einstweiligen Unternehmensanforderungen (fortlaufend) |  | 29d | 2004-01-09 | 2004-02-18 | 7 | 260d |  | Produktmanagement [50%]; Programmmanagement [20%] | 162.4h |
| 10 | 2.2 | Risikomanagement |  | 1d | 2004-01-09 | 2004-01-09 | 7 | 43d |  |  |  |
| 11 | 2.3 | **Definieren der Projektstruktur** |  | 9d | 2004-01-09 | 2004-01-21 | 7 | 35d |  |  | 156h |
| 12 | 2.3.1 | Definieren des Projektüberwachungsprozesses |  | 5d | 2004-01-09 | 2004-01-15 |  | 39d | 4d | Programmmanagement [25%]; Produktmanagement [25%]; Benutzerschulung [25%]; Testen [25%]; Entwicklung [25%]; Logistikmanagement [25%] | 60h |
| 13 | 2.3.2 | Definieren des Problemlösungsprozesses |  | 4d | 2004-01-09 | 2004-01-14 |  | 40d | 5d | Programmmanagement [25%]; Entwicklung [25%]; Testen [25%] | 24h |
| 14 | 2.3.3 | Definieren des Problemüberwachungsprozesses |  | 3d | 2004-01-09 | 2004-01-13 |  | 35d | 0d | Entwicklung [25%]; Testen [25%]; Programmmanagement [50%] | 24h |
| 15 | 2.3.4 | Definieren der Vorgehensweisen beim Zuständigkeitswechsel |  | 4d | 2004-01-14 | 2004-01-19 | 14 | 35d | 0d | Testen [25%]; Programmmanagement [25%]; Entwicklung [25%]; Produktmanagement [25%] | 32h |
| 16 | 2.3.5 | Definieren der Verantwortlichkeit und der Erwartungen |  | 2d | 2004-01-20 | 2004-01-21 | 15 | 35d | 0d | Programmmanagement [50%]; Produktmanagement [50%] | 16h |
| 17 | 2.3.6 | Projektstruktur ist festgelegt | milestone | 0d | 2004-01-21 | 2004-01-21 | 12, 13, 16 | 35d |  |  |  |
| 18 | 2.4 | **Untersuchen und Zusammentragen der Voraussetzungen** |  | 25d | 2004-01-09 | 2004-02-12 |  | 0d |  |  | 208h |
| 19 | 2.4.1 | Vornehmen erster Benutzerbefragungen |  | 2d | 2004-01-09 | 2004-01-12 |  | 0d |  | Produktmanagement; Programmmanagement; Entwicklung | 48h |
| 20 | 2.4.2 | Definieren der Verwendungsszenarien |  | 10d | 2004-01-13 | 2004-01-26 | 19 | 0d |  | Produktmanagement [25%]; Entwicklung [25%]; Programmmanagement [25%] | 60h |
| 21 | 2.4.3 | Entwickeln des vorläufigen Benutzerprofils |  | 5d | 2004-01-27 | 2004-02-02 | 20 | 2d | 0d | Produktmanagement [25%]; Benutzerschulung [25%] | 20h |
| 22 | 2.4.4 | Entwickeln des ersten Konzeptpapiers |  | 1d | 2004-02-03 | 2004-02-03 | 21 | 2d |  | Produktmanagement [25%] | 2h |
| 23 | 2.4.5 | Festlegen der Entwurfsziele |  | 8d | 2004-01-27 | 2004-02-05 | 20 | 0d |  | Produktmanagement [25%]; Programmmanagement [25%]; Entwicklung [25%] | 48h |
| 24 | 2.4.6 | Entwickeln des Lösungskonzepts |  | 5d | 2004-02-06 | 2004-02-12 | 23, 22 | 0d |  | Programmmanagement [25%]; Kunde [25%]; Entwicklung [25%] | 30h |

Notes:
- 10: Dieser Vorgang sollte kontinuierlich während der gesamten Projektbeschreibungsphase durchgeführt werden. Eine Möglichkeit, dies darzustellen, besteht darin, eine Verknüpfung einzufügen, die vom Anfangstermin des Vorgangs 12 zum Anfangstermin dieses Vorgangs verläuft, und dann eine Verknüpfung einzufügen, die vom Endtermin des Vorgangs 34 zum Endtermin dieses Vorgangs verläuft. Weitere Informationen finden Sie in der Hilfedatei für Projektvorlagen.

| ID | WBS | Task | Type | Duration | Start | Finish | Predecessors | Total slack | Free slack | Resources | Work |
| --- | --- | --- | --- | --- | --- | --- | --- | --- | --- | --- | --- |
| 25 | 2.5 | **Ermitteln des vorläufigen Projektumfangs** |  | 19d | 2004-02-13 | 2004-03-10 | 24, 22 | 0d |  |  | 344h |
| 26 | 2.5.1 | Definieren der entscheidenden Erfolgsfaktoren |  | 2d | 2004-02-13 | 2004-02-16 |  | 0d |  | Produktmanagement | 16h |
| 27 | 2.5.2 | Definieren der Erfolgsgradmesser |  | 1d | 2004-02-17 | 2004-02-17 | 26 | 0d |  | Produktmanagement; Testen | 16h |
| 28 | 2.5.3 | Definieren der Hauptanforderungen (Vorläufig) |  | 3d | 2004-02-18 | 2004-02-20 | 27 | 0d |  | Produktmanagement [50%]; Programmmanagement [50%] | 24h |
| 29 | 2.5.4 | Umreißen des Konzepts/Umfangs |  | 3d | 2004-02-23 | 2004-02-25 | 28 | 0d |  | Programmmanagement; Produktmanagement; Entwicklung; Testen; Logistikmanagement | 120h |
| 30 | 2.5.5 | Überprüfen des Konzepts/Umfangs |  | 2d | 2004-02-26 | 2004-02-27 | 29 | 0d |  | Programmmanagement; Produktmanagement; Entwicklung; Testen; Logistikmanagement; Benutzerschulung | 96h |
| 31 | 2.5.6 | Aktualisieren des Konzepts/Umfangs |  | 3d | 2004-03-01 | 2004-03-03 | 30 | 0d |  | Produktmanagement | 24h |
| 32 | 2.5.7 | Zeitpuffer |  | 4d | 2004-03-04 | 2004-03-09 | 31 | 0d |  |  |  |
| 33 | 2.5.8 | Durchführen der Meilensteinüberprüfung |  | 1d | 2004-03-10 | 2004-03-10 | 31, 32 | 0d |  | Programmmanagement; Produktmanagement; Entwicklung; Testen; Logistikmanagement; Benutzerschulung | 48h |
| 34 | 2.6 | Konzept ist gebilligt | milestone | 0d | 2004-03-10 | 2004-03-10 | 33, 28, 17, 10 | 0d |  | Programmmanagement; Produktmanagement; Entwicklung; Testen; Logistikmanagement |  |
| 35 | 3 | **Planung** |  | 59d | 2004-03-11 | 2004-06-01 | 34 | 0d |  |  | 3541.2h |
| 36 | 3.1 | Aktualisieren der Risikobewertung |  | 1d | 2004-03-11 | 2004-03-11 | 34 | 58d |  | Programmmanagement | 8h |
| 37 | 3.2 | Durchführen von Benutzerbefragungen |  | 10d | 2004-03-11 | 2004-03-24 | 34 | 0d |  | Produktmanagement [50%]; Entwicklung [25%]; Testen [25%]; Logistikmanagement [25%]; Programmmanagement [50%] | 140h |
| 38 | 3.3 | **Erstellen der Funktionsbeschreibung** |  | 31d | 2004-03-12 | 2004-04-23 |  | 0d |  |  | 448h |
| 39 | 3.3.1 | Entwickeln der Funktionsbeschreibung - Variante 0 |  | 5d | 2004-03-12 | 2004-03-18 | 37FS-9% | 0d |  | Programmmanagement [80%]; Produktmanagement [30%]; Entwicklung [40%]; Testen [50%]; Logistikmanagement [40%]; Benutzerschulung [40%] | 112h |
| 40 | 3.3.2 | Entwickeln der Funktionsbeschreibung - Variante 1 |  | 5d | 2004-03-19 | 2004-03-25 | 39 | 22d | 0d | Programmmanagement [80%]; Produktmanagement [30%]; Entwicklung [40%]; Testen [50%]; Logistikmanagement [40%]; Benutzerschulung [40%] | 112h |
| 41 | 3.3.3 | Entwickeln der Funktionsbeschreibung - Variante 2 |  | 5d | 2004-03-26 | 2004-04-01 | 40 | 22d | 0d | Programmmanagement [80%]; Produktmanagement [30%]; Entwicklung [40%]; Testen [50%]; Logistikmanagement [40%]; Benutzerschulung [40%] | 112h |
| 42 | 3.3.4 | Entwickeln der Funktionsbeschreibung - Variante n |  | 5d | 2004-04-02 | 2004-04-08 | 41 | 22d | 11d | Programmmanagement [80%]; Produktmanagement [30%]; Entwicklung [40%]; Testen [50%]; Logistikmanagement [40%]; Benutzerschulung [40%] | 112h |
| 43 | 3.3.5 | Grundsätzliche Funktionsbeschreibung | milestone | 0d | 2004-04-23 | 2004-04-23 | 42, 48 | 11d | 2d | Programmmanagement |  |
| 44 | 3.4 | **Entwicklungsplan** |  | 28.25d | 2004-03-17 | 2004-04-26 |  | 0d |  |  | 598.8h |
| 45 | 3.4.1 | **Erstellen des Entwicklungsplanes** |  | 28d | 2004-03-17 | 2004-04-23 |  | 0d |  |  | 554.8h |
| 46 | 3.4.1.1 | Erstellen des Konzeptentwurfs |  | 10d | 2004-03-17 | 2004-03-30 | 39SS+3d | 0d |  | Entwicklung [80%]; Programmmanagement [40%]; Testen [25%]; Produktmanagement [20%] | 132h |
| 47 | 3.4.1.2 | Erstellen des logischen Entwurfs |  | 15d | 2004-03-23 | 2004-04-12 | 46SS+4d | 0d |  | Entwicklung [50%]; Programmmanagement [50%]; Testen [25%]; Logistikmanagement [25%]; Benutzerschulung [25%] | 210h |
| 48 | 3.4.1.3 | Erstellen des physischen Entwurfs |  | 19d | 2004-03-30 | 2004-04-23 | 47SS+5d | 0d |  | Entwicklung [80%]; Testen [50%]; Programmmanagement [10%] | 212.8h |
| 49 | 3.4.2 | Festlegen des Entwicklungszeitplanes |  | 5d | 2004-04-19 | 2004-04-26 | 48SS+7.5% | 15.75d |  | Entwicklung; Testen [10%] | 44h |

Notes:
- 36: Dieser Vorgang sollte kontinuierlich während der gesamten Planungsphase durchgeführt werden. Eine Möglichkeit, dies darzustellen, besteht darin, eine Verknüpfung einzufügen, die vom Anfangstermin des Vorgangs 37 zum Anfangstermin dieses Vorgangs verläuft, und dann eine Verknüpfung einzufügen, die vom Endtermin des Vorgangs 78 zum Endtermin dieses Vorgangs verläuft. Weitere Informationen finden Sie in der Hilfedatei für Projektvorlagen.

| ID | WBS | Task | Type | Duration | Start | Finish | Predecessors | Total slack | Free slack | Resources | Work |
| --- | --- | --- | --- | --- | --- | --- | --- | --- | --- | --- | --- |
| 50 | 3.5 | **Testplan** |  | 35d | 2004-03-17 | 2004-05-04 |  | 9d |  | Testen | 624h |
| 51 | 3.5.1 | Entwickeln des Testplanes |  | 30d | 2004-03-17 | 2004-04-27 | 39SS+3d | 9d | 0d | Testen; Programmmanagement [25%] | 300h |
| 52 | 3.5.2 | Entwickeln des Testzeitplanes |  | 5d | 2004-04-28 | 2004-05-04 | 51, 43 | 9d |  | Testen; Programmmanagement [10%] | 44h |
| 53 | 3.6 | **Benutzerschulungsplan** |  | 36d | 2004-03-17 | 2004-05-05 |  | 8d |  | Benutzerschulung | 691.2h |
| 54 | 3.6.1 | Entwickeln des Benutzerschulungsplanes |  | 30d | 2004-03-17 | 2004-04-27 | 39SS+3d | 8d | 0d | Benutzerschulung; Testen [20%]; Produktmanagement [10%]; Kunde [10%] | 336h |
| 55 | 3.6.2 | Entwickeln des Zeitplanes für die Benutzerschulung |  | 6d | 2004-04-28 | 2004-05-05 | 54 | 8d |  | Benutzerschulung; Programmmanagement [10%]; Produktmanagement [20%]; Kunde [10%] | 67.2h |
| 56 | 3.7 | **Logistikplan** |  | 48d | 2004-03-11 | 2004-05-17 |  | 0d |  | Logistikmanagement | 705.6h |
| 57 | 3.7.1 | **Entwickeln des Logistikplanes** |  | 43d | 2004-03-11 | 2004-05-10 |  | 0d |  |  | 321.6h |
| 58 | 3.7.1.1 | Durchführen einer Infrastrukturanalyse |  | 15d | 2004-03-11 | 2004-03-31 |  | 1d |  |  |  |
| 59 | 3.7.1.2 | Entwickeln eines Sicherheitsplanes |  | 2d | 2004-03-19 | 2004-03-22 | 39 | 8d |  | Logistikmanagement; Kunde [10%]; Produktmanagement [10%] | 19.2h |
| 60 | 3.7.1.3 | Entwickeln des Verteilungsplanes |  | 27d | 2004-04-02 | 2004-05-10 | 39FS-3d, 59, 48SS+3d, 58 | 0d |  | Logistikmanagement; Testen [20%]; Benutzerschulung [10%]; Kunde [10%] | 302.4h |
| 61 | 3.7.1.4 | Bestellen von Komponenten |  | 15d | 2004-04-16 | 2004-05-06 | 60SS+10d | 0d |  |  |  |
| 62 | 3.7.1.5 | Logistikplan ist vollständig | milestone | 0d | 2004-05-06 | 2004-05-06 | 59, 61 | 0d |  |  |  |
| 63 | 3.7.2 | Erstellen des Logistikzeitplanes |  | 7d | 2004-05-07 | 2004-05-17 | 62 | 0d |  |  |  |
| 64 | 3.8 | **Produktmanagementplan** |  | 18d | 2004-03-11 | 2004-04-05 |  | 30d |  |  | 48h |
| 65 | 3.8.1 | Entwickeln des Produktmanagementplanes |  | 14d | 2004-03-17 | 2004-04-05 | 39SS+3d | 30d |  |  |  |
| 66 | 3.8.2 | Entwickeln des Produktmanagement-Zeitplanes |  | 5d | 2004-03-11 | 2004-03-17 |  | 43d |  | Produktmanagement; Programmmanagement [20%] | 48h |
| 67 | 3.9 | **Programmmanagementplan** |  | 41d | 2004-03-17 | 2004-05-12 | 39SS+3d | 3d |  |  | 164h |
| 68 | 3.9.1 | Erstellen des Programmmanagementplanes |  | 21d | 2004-03-17 | 2004-04-14 | 39SS+3d | 3d | 0d | Programmmanagement [50%] | 84h |
| 69 | 3.9.2 | Erstellen des Programmmanagement-Zeitplanes |  | 20d | 2004-04-15 | 2004-05-12 | 68 | 3d |  | Programmmanagement [50%] | 80h |
| 70 | 3.10 | Grundsätzlicher Projektplan ist fertig | milestone | 0d | 2004-05-17 | 2004-05-17 | 44, 50, 53, 56, 64, 67, 65 | 0d |  | Programmmanagement; Produktmanagement; Entwicklung; Testen; Logistikmanagement |  |
| 71 | 3.11 | **Zusammenführen der Projektpläne** |  | 11d | 2004-05-18 | 2004-06-01 | 70 | 0d |  |  | 113.6h |
| 72 | 3.11.1 | Überprüfen des Gesamtplanes |  | 4d | 2004-05-18 | 2004-05-21 |  | 0d |  | Programmmanagement [30%]; Produktmanagement [30%]; Entwicklung [30%]; Testen [30%]; Logistikmanagement [30%]; Benutzerschulung [30%] | 57.6h |
| 73 | 3.11.2 | Erstellen des Gesamtzeitplanes |  | 2d | 2004-05-24 | 2004-05-25 | 72, 63, 69, 49, 52, 55, 66 | 0d |  |  |  |
| 74 | 3.11.3 | Zeitpuffer |  | 4d | 2004-05-26 | 2004-05-31 | 73 | 0d |  |  |  |
| 75 | 3.11.4 | Festlegen des Lieferdatums | milestone | 0d | 2004-05-31 | 2004-05-31 | 74 | 0d |  | Programmmanagement; Produktmanagement; Entwicklung; Testen; Logistikmanagement; Benutzerschulung |  |
| 76 | 3.11.5 | Konzept/Umfang eingefroren | milestone | 0d | 2004-05-31 | 2004-05-31 | 75 | 0d |  |  |  |
| 77 | 3.11.6 | Durchführen der Meilensteinüberprüfung |  | 1d | 2004-06-01 | 2004-06-01 | 76 | 0d |  | Programmmanagement; Produktmanagement; Entwicklung; Testen; Logistikmanagement; Benutzerschulung; Kunde | 56h |
| 78 | 3.12 | Projektplan ist angenommen | milestone | 0d | 2004-06-01 | 2004-06-01 | 71, 77, 36 | 0d |  | Programmmanagement; Produktmanagement; Entwicklung; Testen; Logistikmanagement |  |

| ID | WBS | Task | Type | Duration | Start | Finish | Predecessors | Total slack | Free slack | Resources | Work |
| --- | --- | --- | --- | --- | --- | --- | --- | --- | --- | --- | --- |
| 79 | 4 | **Entwicklung** |  | 81d | 2004-06-01 | 2004-09-22 |  | 0d |  | Entwicklung | 3141.04h |
| 80 | 4.1 | Aktualisieren der Risikobewertung |  | 1d | 2004-06-02 | 2004-06-02 | 78 | 79d |  | Programmmanagement [3%]; Produktmanagement [3%]; Entwicklung [3%]; Testen [3%]; Logistikmanagement [3%]; Benutzerschulung [3%] | 1.44h |
| 81 | 4.2 | Ausrüstung für die Entwicklung/Prüfung des Konzepts trifft ein | milestone | 0d | 2004-06-01 | 2004-06-01 | 78 | 0d |  | Logistikmanagement |  |
| 82 | 4.3 | Einrichten der Entwicklungsräume/-umgebung |  | 5d | 2004-06-02 | 2004-06-08 | 81 | 0d |  | Logistikmanagement | 40h |
| 83 | 4.4 | **Interne Version 1** |  | 24d | 2004-06-02 | 2004-07-05 |  | 0d |  | Entwicklung | 691.6h |
| 84 | 4.4.1 | Entwickeln der Zielkomponenten |  | 9d | 2004-06-02 | 2004-06-14 | 78 | 15d |  | Entwicklung; Logistikmanagement | 144h |
| 85 | 4.4.2 | Testen der einzelnen Komponenten |  | 5d | 2004-06-09 | 2004-06-15 | 82 | 0d |  | Testen; Entwicklung [25%] | 50h |
| 86 | 4.4.3 | Testen der zusammengestellten Anwendung |  | 6d | 2004-06-11 | 2004-06-18 | 85SS+2d | 0d |  | Testen; Entwicklung [25%] | 60h |
| 87 | 4.4.4 | Entwickeln von Unterlagen zur Leistungsverbesserung |  | 4d | 2004-06-02 | 2004-06-07 | 78 | 8d | 0d | Benutzerschulung | 32h |
| 88 | 4.4.5 | Testen und Überprüfen der Unterlagen |  | 3d | 2004-06-08 | 2004-06-10 | 87 | 8d | 0d | Testen | 24h |
| 89 | 4.4.6 | Entwickeln der Verteilungsverfahren |  | 9d | 2004-06-11 | 2004-06-23 | 88 | 8d |  | Logistikmanagement; Testen [30%] | 93.6h |
| 90 | 4.4.7 | Erstellen des Verteilungsproduktes |  | 2d | 2004-06-21 | 2004-06-22 | 85, 86 | 0d |  | Programmmanagement; Entwicklung; Testen; Logistikmanagement; Benutzerschulung | 80h |
| 91 | 4.4.8 | Verteilen an die entsprechenden Gruppen |  | 1d | 2004-06-23 | 2004-06-23 | 90 | 0d |  | Programmmanagement; Logistikmanagement | 16h |
| 92 | 4.4.9 | Zeitpuffer |  | 8d | 2004-06-24 | 2004-07-05 | 91 | 0d |  |  |  |
| 93 | 4.5 | Interne Version 1 ist fertig | milestone | 0d | 2004-07-05 | 2004-07-05 | 83, 92 | 0d |  | Programmmanagement; Produktmanagement; Entwicklung; Testen; Logistikmanagement |  |
| 94 | 4.6 | Auswerten der Ergebnisse der internen Version |  | 2d | 2004-07-06 | 2004-07-07 | 93 | 0d |  |  |  |
| 95 | 4.7 | Abschließendes Auswerten der Version |  | 1d | 2004-07-08 | 2004-07-08 | 94 | 0d |  |  |  |
| 96 | 4.8 | **Interne Version n** |  | 24d | 2004-07-06 | 2004-08-06 |  | 0d |  | Entwicklung | 696h |
| 97 | 4.8.1 | Entwickeln der Zielkomponenten |  | 10d | 2004-07-06 | 2004-07-19 | 93 | 3d |  | Entwicklung; Testen [50%]; Logistikmanagement | 200h |
| 98 | 4.8.2 | Testen der einzelnen Komponenten |  | 4d | 2004-07-06 | 2004-07-09 | 93 | 9d |  | Testen | 32h |
| 99 | 4.8.3 | Testen der zusammengestellten Anwendung |  | 5d | 2004-07-06 | 2004-07-12 | 93 | 18d |  | Testen | 40h |
| 100 | 4.8.4 | Entwickeln von Unterlagen zur Leistungsverbesserung |  | 4d | 2004-07-09 | 2004-07-14 | 95 | 0d |  | Benutzerschulung | 32h |
| 101 | 4.8.5 | Testen und Überprüfen der Unterlagen |  | 3d | 2004-07-15 | 2004-07-19 | 100 | 0d |  | Testen | 24h |
| 102 | 4.8.6 | Entwickeln der Verteilungsverfahren |  | 3d | 2004-07-20 | 2004-07-22 | 101 | 0d |  | Logistikmanagement | 24h |
| 103 | 4.8.7 | Erstellen des Verteilungsproduktes |  | 4d | 2004-07-23 | 2004-07-28 | 98, 97, 102 | 0d |  | Entwicklung; Testen; Logistikmanagement; Benutzerschulung | 128h |
| 104 | 4.8.8 | Zeitpuffer |  | 6d | 2004-07-29 | 2004-08-05 | 103 | 0d |  |  |  |
| 105 | 4.8.9 | Verteilen an die entsprechenden Gruppen |  | 1d | 2004-08-06 | 2004-08-06 | 99, 104 | 0d |  | Logistikmanagement; Programmmanagement; Produktmanagement | 24h |
| 106 | 4.9 | Interne Version n ist fertig |  | 1d | 2004-08-09 | 2004-08-09 | 96, 105 | 0d |  | Programmmanagement; Produktmanagement; Entwicklung; Testen; Logistikmanagement | 40h |
| 107 | 4.10 | Auswerten der Ergebnisse der internen Version |  | 2d | 2004-08-10 | 2004-08-11 | 106 | 0d |  | Programmmanagement; Produktmanagement; Entwicklung; Testen; Logistikmanagement; Benutzerschulung | 96h |
| 108 | 4.11 | Einfrieren der Funktionsbeschreibung |  | 1d | 2004-08-12 | 2004-08-12 | 107 | 0d |  |  |  |
| 109 | 4.12 | Abschließende Featureentwicklung |  | 10d | 2004-08-13 | 2004-08-26 | 108 | 0d |  | Entwicklung; Testen [50%] | 120h |
| 110 | 4.13 | Abschließende Logistikentwicklung |  | 9d | 2004-08-13 | 2004-08-25 | 108 | 1d |  | Logistikmanagement; Testen [50%] | 108h |
| 111 | 4.14 | Abschließende Entwicklung für Benutzerunterstützung |  | 5d | 2004-08-13 | 2004-08-19 | 108 | 5d |  | Benutzerschulung; Testen [50%] | 60h |
| 112 | 4.15 | Feature ist fertig | milestone | 0d | 2004-08-26 | 2004-08-26 | 109, 111, 110 | 0d |  |  |  |

Notes:
- 80: Dieser Vorgang sollte kontinuierlich während der gesamten Entwicklungsphase durchgeführt werden. Eine Möglichkeit, dies darzustellen, besteht darin, eine Verknüpfung einzufügen, die vom Anfangstermin des Vorgangs 81 zum Anfangstermin dieses Vorgangs verläuft, und dann eine Verknüpfung einzufügen, die vom Endtermin des Vorgangs 122 zum Endtermin dieses Vorgangs verläuft. Weitere Informationen finden Sie in der Hilfedatei für Projektvorlagen.

| ID | WBS | Task | Type | Duration | Start | Finish | Predecessors | Total slack | Resources | Work |
| --- | --- | --- | --- | --- | --- | --- | --- | --- | --- | --- |
| 113 | 4.16 | **Aktualisieren der Pläne und Zeitpläne** |  | 13d | 2004-08-27 | 2004-09-14 |  | 0d | Programmmanagement | 360h |
| 114 | 4.16.1 | Aktualisieren des Entwicklungsplanes |  | 4d | 2004-08-27 | 2004-09-01 | 112 | 0d | Entwicklung | 32h |
| 115 | 4.16.2 | Aktualisieren des Testplanes |  | 3d | 2004-08-27 | 2004-08-31 | 114SS | 10d | Testen | 24h |
| 116 | 4.16.3 | Aktualisieren des Logistikplanes |  | 13d | 2004-08-27 | 2004-09-14 | 114SS | 0d | Logistikmanagement | 104h |
| 117 | 4.16.4 | Aktualisieren des Programmmanagementplanes |  | 3d | 2004-08-27 | 2004-08-31 | 114SS | 10d | Programmmanagement | 24h |
| 118 | 4.16.5 | Aktualisieren des Produktmanagementplanes |  | 3d | 2004-08-27 | 2004-08-31 | 114SS | 10d | Produktmanagement | 24h |
| 119 | 4.16.6 | Aktualisieren des Benutzerschulungsplanes |  | 6d | 2004-08-27 | 2004-09-03 | 114SS | 7d | Benutzerschulung | 48h |
| 120 | 4.17 | Zeitpuffer |  | 3d | 2004-09-15 | 2004-09-17 | 114, 115, 116, 119, 117, 118 | 0d | Programmmanagement; Produktmanagement; Entwicklung; Testen; Logistikmanagement; Benutzerschulung | 144h |
| 121 | 4.18 | Durchführen der Meilensteinüberprüfung |  | 2d | 2004-09-20 | 2004-09-21 | 120 | 0d | Programmmanagement; Produktmanagement; Entwicklung; Testen; Logistikmanagement; Benutzerschulung | 96h |
| 122 | 4.19 | Umfang ist abgesteckt |  | 1d | 2004-09-22 | 2004-09-22 | 113, 121, 80 | 0d | Programmmanagement; Produktmanagement; Entwicklung; Testen; Logistikmanagement | 40h |
| 123 | 5 | **Stabilisieren** |  | 73d | 2004-09-23 | 2005-01-03 |  | 0d | Logistikmanagement | 1684h |
| 124 | 5.1 | Aktualisieren der Risikobewertung |  | 1d | 2004-09-23 | 2004-09-23 | 122, 103 | 71d | Programmmanagement [10%]; Produktmanagement [10%]; Entwicklung [10%]; Testen [10%]; Logistikmanagement [10%]; Benutzerschulung [10%]; Software Service [10%]; Kunde [10%] | 6.4h |
| 125 | 5.2 | **Betaversion 1** |  | 32d | 2004-09-23 | 2004-11-05 |  | 0d |  | 784h |
| 126 | 5.2.1 | Entwickeln des Betaplanes |  | 3d | 2004-09-23 | 2004-09-27 | 103, 122 | 0d | Programmmanagement; Logistikmanagement | 48h |
| 127 | 5.2.2 | Ansprechen und Auswählen von Benutzern |  | 2d | 2004-09-28 | 2004-09-29 | 126 | 0d | Produktmanagement; Programmmanagement | 32h |
| 128 | 5.2.3 | Vorbereiten des Betapakets |  | 8d | 2004-09-28 | 2004-10-07 | 120, 127SS | 0d | Programmmanagement; Entwicklung; Logistikmanagement; Testen | 256h |
| 129 | 5.2.4 | Beginnen der Betaphase | milestone | 0d | 2004-10-07 | 2004-10-07 | 128 | 0d |  |  |
| 130 | 5.2.5 | Bereitstellen der Unterstützung für Betaversion |  | 8d | 2004-10-08 | 2004-10-19 | 129 | 0d | Entwicklung; Logistikmanagement | 128h |
| 131 | 5.2.6 | Sammeln des Benutzerfeedbacks |  | 7d | 2004-10-20 | 2004-10-28 | 130 | 0d |  |  |
| 132 | 5.2.7 | Beenden der Unterstützung für Betaversion | milestone | 0d | 2004-10-28 | 2004-10-28 | 131 | 0d |  |  |
| 133 | 5.2.8 | Korrigieren von Fehlern |  | 10d | 2004-10-25 | 2004-11-05 | 132FS-4d | 0d | Entwicklung; Programmmanagement; Logistikmanagement; Benutzerschulung | 320h |
| 134 | 5.2.9 | Beenden der Betaphase | milestone | 0d | 2004-11-05 | 2004-11-05 | 130, 133 | 0d |  |  |
| 135 | 5.3 | Betaversion n |  | 1d | 2004-11-08 | 2004-11-08 | 134 | 0d |  |  |
| 136 | 5.4 | Korrigieren von Fehlern |  | 10d | 2004-11-09 | 2004-11-22 | 135 | 0d | Entwicklung; Testen; Programmmanagement [25%] | 180h |
| 137 | 5.5 | Fehlerzusammenfassung |  | 1d | 2004-11-23 | 2004-11-23 | 136 | 0d |  |  |
| 138 | 5.6 | Korrigieren von Fehlern mit hoher Priorität |  | 10d | 2004-11-24 | 2004-12-07 | 137 | 0d |  |  |
| 139 | 5.7 | Fehlerfreie Version | milestone | 0d | 2004-12-07 | 2004-12-07 | 138 | 0d | Programmmanagement |  |
| 140 | 5.8 | Vornehmen der letzten Fehlerbewertung |  | 5d | 2004-12-08 | 2004-12-14 | 139 | 0d |  |  |

Notes:
- 124: Dieser Vorgang sollte kontinuierlich während der gesamten Stabilisierungsphase durchgeführt werden. Eine Möglichkeit, dies darzustellen, besteht darin, eine Verknüpfung einzufügen, die vom Anfangstermin des Vorgangs 126 zum Anfangstermin dieses Vorgangs verläuft, und dann eine Verknüpfung einzufügen, die vom Endtermin des Vorgangs 147 zum Endtermin dieses Vorgangs verläuft. Weitere Informationen finden Sie in der Hilfedatei für Projektvorlagen.

| ID | WBS | Task | Type | Duration | Start | Finish | Predecessors | Total slack | Resources | Work |
| --- | --- | --- | --- | --- | --- | --- | --- | --- | --- | --- |
| 141 | 5.9 | **Release Candidate 1** |  | 7d | 2004-12-15 | 2004-12-23 | 140 | 0d |  | 129.6h |
| 142 | 5.9.1 | Bewertung durch das Entwicklungsteam |  | 2d | 2004-12-15 | 2004-12-16 |  | 0d | Entwicklung; Logistikmanagement [80%]; Programmmanagement [50%]; Produktmanagement [30%]; Benutzerschulung [50%]; Testen [75%] | 61.6h |
| 143 | 5.9.2 | Bewertung durch Kunden/Benutzer |  | 2d | 2004-12-17 | 2004-12-20 | 142 | 0d | Produktmanagement; Benutzerschulung | 32h |
| 144 | 5.9.3 | Bewertung durch den Software Service |  | 3d | 2004-12-21 | 2004-12-23 | 143 | 0d | Software Service; Logistikmanagement [25%]; Programmmanagement [25%] | 36h |
| 145 | 5.10 | Release Candidate n |  | 6d | 2004-12-24 | 2004-12-31 | 144 | 0d |  |  |
| 146 | 5.11 | Vorläufe Endversion | milestone | 0d | 2004-12-31 | 2004-12-31 | 145 | 0d |  |  |
| 147 | 5.12 | Endversion |  | 1d | 2005-01-03 | 2005-01-03 | 146, 124 | 0d |  |  |
| 148 | 6 | Projektnachbereitung |  | 2d | 2005-02-15 | 2005-02-16 | 147FS+30d | 0d |  |  |
