# Softwareentwicklung

Schedule from MS Project, 2004-01-01 to 2004-05-13.

## Calendars

- Standard: Mon-Fri 08:00-12:00, 13:00-17:00; Sat-Sun off.

## Resources

| Resource |
| --- |
| Management |
| Projektmanager |
| Analytiker |
| Entwickler |
| Tester |
| Ausbilder |
| Technische Autoren |
| Bereitstellungsteam |

## Schedule

| ID | WBS | Task | Type | Duration | Start | Finish | Predecessors | Total slack | Resources | Work |
| --- | --- | --- | --- | --- | --- | --- | --- | --- | --- | --- |
| 1 | 1 | **Umfang** |  | 3.5d | 2004-01-01 | 2004-01-06 |  | 0d |  | 28h |
| 2 | 1.1 | Ermitteln des Projektumfanges |  | 4h | 2004-01-01 | 2004-01-01 |  | 0d | Management | 4h |
| 3 | 1.2 | Aufstellen der Projektfinanzierung |  | 1d | 2004-01-01 | 2004-01-02 | 2 | 0d | Management | 8h |
| 4 | 1.3 | Festlegen der vorläufigen Ressourcen |  | 1d | 2004-01-02 | 2004-01-05 | 3 | 0d | Projektmanager | 8h |
| 5 | 1.4 | Zuweisen der Kernressourcen |  | 1d | 2004-01-05 | 2004-01-06 | 4 | 0d | Projektmanager | 8h |
| 6 | 1.5 | Umfang ist abgesteckt | milestone | 0d | 2004-01-06 | 2004-01-06 | 5 | 0d |  |  |
| 7 | 2 | **Analyse/Softwareanforderungen** |  | 14d | 2004-01-06 | 2004-01-26 |  | 0d |  | 120h |
| 8 | 2.1 | Ausführen der Bedarfsanalyse |  | 5d | 2004-01-06 | 2004-01-13 | 6 | 0d | Analytiker | 40h |
| 9 | 2.2 | Erstellen des Softwarepflichtenheftes |  | 3d | 2004-01-13 | 2004-01-16 | 8 | 0d | Analytiker | 24h |
| 10 | 2.3 | Aufstellen des vorläufigen Budgets |  | 2d | 2004-01-16 | 2004-01-20 | 9 | 0d | Projektmanager | 16h |
| 11 | 2.4 | Überprüfen des Softwarepflichtenheftes/Budgets mit dem Team |  | 4h | 2004-01-20 | 2004-01-20 | 10 | 0d | Projektmanager; Analytiker | 8h |
| 12 | 2.5 | Einarbeiten des Feedbacks zum Softwarepflichtenheft |  | 1d | 2004-01-21 | 2004-01-21 | 11 | 0d | Analytiker | 8h |
| 13 | 2.6 | Festlegen des Fertigstellungsdatums |  | 1d | 2004-01-22 | 2004-01-22 | 12 | 0d | Projektmanager | 8h |
| 14 | 2.7 | Einholen der Genehmigungen zum Fortsetzen des Projekts (Konzept, Fertigstellungsdatum, Budget) |  | 4h | 2004-01-23 | 2004-01-23 | 13 | 0d | Management; Projektmanager | 8h |
| 15 | 2.8 | Anfordern der erforderlichen Ressourcen |  | 1d | 2004-01-23 | 2004-01-26 | 14 | 0d | Projektmanager | 8h |
| 16 | 2.9 | Analyse ist abgeschlossen | milestone | 0d | 2004-01-26 | 2004-01-26 | 15 | 0d |  |  |
| 17 | 3 | **Entwurf** |  | 14.5d | 2004-01-26 | 2004-02-13 |  | 0d |  | 120h |
| 18 | 3.1 | Überarbeiten des Softwarepflichtenheftes |  | 2d | 2004-01-26 | 2004-01-28 | 16 | 0d | Analytiker | 16h |
| 19 | 3.2 | Ausarbeiten der Funktionsbeschreibungen |  | 5d | 2004-01-28 | 2004-02-04 | 18 | 0d | Analytiker | 40h |
| 20 | 3.3 | Entwickeln eines Prototyps anhand der Funktionsbeschreibungen |  | 4d | 2004-02-04 | 2004-02-10 | 19 | 0d | Analytiker | 32h |
| 21 | 3.4 | Überarbeiten der Funktionsbeschreibungen |  | 2d | 2004-02-10 | 2004-02-12 | 20 | 0d | Management | 16h |
| 22 | 3.5 | Einarbeiten des Feedbacks in die Funktionsbeschreibungen |  | 1d | 2004-02-12 | 2004-02-13 | 21 | 0d | Management | 8h |
| 23 | 3.6 | Einholen der Genehmigung zum Fortsetzen des Projekts |  | 4h | 2004-02-13 | 2004-02-13 | 22 | 0d | Management; Projektmanager | 8h |
| 24 | 3.7 | Entwurf ist abgeschlossen | milestone | 0d | 2004-02-13 | 2004-02-13 | 23 | 0d |  |  |

| ID | WBS | Task | Type | Duration | Start | Finish | Predecessors | Total slack | Free slack | Resources | Work |
| --- | --- | --- | --- | --- | --- | --- | --- | --- | --- | --- | --- |
| 25 | 4 | **Entwicklung** |  | 21.75d | 2004-02-16 | 2004-03-16 |  | 0d |  |  | 264h |
| 26 | 4.1 | Überarbeiten der Funktionsbeschreibungen |  | 1d | 2004-02-16 | 2004-02-16 | 24 | 0d |  | Entwickler | 8h |
| 27 | 4.2 | Festlegen der Parameter des modularen/mehrstufigen Entwurfs |  | 1d | 2004-02-17 | 2004-02-17 | 26 | 0d |  | Entwickler | 8h |
| 28 | 4.3 | Zuordnen von Entwicklungspersonal |  | 1d | 2004-02-18 | 2004-02-18 | 27 | 0d |  | Entwickler | 8h |
| 29 | 4.4 | Entwickeln des Codes |  | 15d | 2004-02-19 | 2004-03-10 | 28 | 0d |  | Entwickler | 120h |
| 30 | 4.5 | Testen durch den Entwickler (Beseitigen der Hauptfehler) |  | 15d | 2004-02-24 | 2004-03-16 | 29FS-7.5% | 0d |  | Entwickler | 120h |
| 31 | 4.6 | Entwicklung ist abgeschlossen | milestone | 0d | 2004-03-16 | 2004-03-16 | 30 | 0d |  |  |  |
| 32 | 5 | **Testen** |  | 48.75d | 2004-02-16 | 2004-04-22 |  | 15d |  |  | 280h |
| 33 | 5.1 | Entwickeln von Komponententestplänen anhand des Softwarepflichtenheftes |  | 4d | 2004-02-16 | 2004-02-19 | 24 | 17.75d |  | Tester | 32h |
| 34 | 5.2 | Entwickeln von Gesamttestplänen anhand des Softwarepflichtenheftes |  | 4d | 2004-02-16 | 2004-02-19 | 24 | 59.75d |  | Tester | 32h |
| 35 | 5.3 | **Komponententesten** |  | 15d | 2004-03-16 | 2004-04-06 |  | 0d |  |  | 120h |
| 36 | 5.3.1 | Überarbeiten des modularen Codes |  | 5d | 2004-03-16 | 2004-03-23 | 33, 31 | 0d |  | Tester | 40h |
| 37 | 5.3.2 | Testen der Komponentenmodule anhand des Softwarepflichtenheftes |  | 2d | 2004-03-23 | 2004-03-25 | 31, 36 | 0d |  | Tester | 16h |
| 38 | 5.3.3 | Festhalten der Abweichungen vom Softwarepflichtenheft |  | 3d | 2004-03-25 | 2004-03-30 | 37 | 0d |  | Tester | 24h |
| 39 | 5.3.4 | Ändern des Codes |  | 3d | 2004-03-30 | 2004-04-02 | 38 | 0d |  | Tester | 24h |
| 40 | 5.3.5 | Testen des geänderten Codes |  | 2d | 2004-04-02 | 2004-04-06 | 39 | 0d |  | Tester | 16h |
| 41 | 5.3.6 | Komponententesten ist abgeschlossen | milestone | 0d | 2004-04-06 | 2004-04-06 | 40 | 0d |  |  |  |
| 42 | 5.4 | **Gesamttesten** |  | 12d | 2004-04-06 | 2004-04-22 |  | 0d |  |  | 96h |
| 43 | 5.4.1 | Testen der Modulintegration |  | 5d | 2004-04-06 | 2004-04-13 | 41 | 0d |  | Tester | 40h |
| 44 | 5.4.2 | Festhalten der Abweichungen vom Softwarepflichtenheft |  | 2d | 2004-04-13 | 2004-04-15 | 43 | 0d |  | Tester | 16h |
| 45 | 5.4.3 | Ändern des Codes |  | 3d | 2004-04-15 | 2004-04-20 | 44 | 0d |  | Tester | 24h |
| 46 | 5.4.4 | Testen des geänderten Codes |  | 2d | 2004-04-20 | 2004-04-22 | 45 | 0d |  | Tester | 16h |
| 47 | 5.4.5 | Gesamttesten ist abgeschlossen | milestone | 0d | 2004-04-22 | 2004-04-22 | 46 | 0d |  |  |  |
| 48 | 6 | **Schulung** |  | 45.75d | 2004-02-16 | 2004-04-19 |  | 3d |  |  | 256h |
| 49 | 6.1 | Entwickeln von Schulungsbeschreibungen für Endbenutzer |  | 3d | 2004-02-16 | 2004-02-18 | 24 | 21.75d | 18.75d | Ausbilder | 24h |
| 50 | 6.2 | Entwickeln von Schulungsbeschreibungen für Software Service-Personal |  | 3d | 2004-02-16 | 2004-02-18 | 24 | 21.75d | 18.75d | Ausbilder | 24h |
| 51 | 6.3 | Festlegen der Schulungsmethoden (computerbasierte Schulung, Ausbildungskurse usw.) |  | 2d | 2004-02-16 | 2004-02-17 | 24 | 22.75d | 19.75d | Ausbilder | 16h |
| 52 | 6.4 | Entwickeln der Schulungsunterlagen |  | 3w | 2004-03-16 | 2004-04-06 | 49, 31, 50, 51 | 3d | 0d | Ausbilder | 120h |
| 53 | 6.5 | Untersuchen der Brauchbarkeit der Schulungsunterlagen |  | 4d | 2004-04-06 | 2004-04-12 | 52 | 3d | 0d | Ausbilder | 32h |
| 54 | 6.6 | Abschließen der Schulungsunterlagen |  | 3d | 2004-04-12 | 2004-04-15 | 53 | 3d | 0d | Ausbilder | 24h |
| 55 | 6.7 | Entwickeln der Schulungsanleitung |  | 2d | 2004-04-15 | 2004-04-19 | 54 | 3d | 0d | Ausbilder | 16h |
| 56 | 6.8 | Schulungsunterlagen sind abgeschlossen | milestone | 0d | 2004-04-19 | 2004-04-19 | 55 | 3d |  |  |  |

| ID | WBS | Task | Type | Duration | Start | Finish | Predecessors | Total slack | Free slack | Resources | Work |
| --- | --- | --- | --- | --- | --- | --- | --- | --- | --- | --- | --- |
| 57 | 7 | **Dokumentation** |  | 30.5d | 2004-02-16 | 2004-03-29 |  | 18.25d |  |  | 336h |
| 58 | 7.1 | Entwickeln der Vorgaben für das Hilfesystem |  | 1d | 2004-02-16 | 2004-02-16 | 24 | 27.75d | 9.5d | Technische Autoren | 8h |
| 59 | 7.2 | Entwickeln des Hilfesystems |  | 3w | 2004-03-01 | 2004-03-22 | 58, 29FS-5% | 18.25d | 0d | Technische Autoren | 120h |
| 60 | 7.3 | Beurteilen der Hilfedokumentation |  | 3d | 2004-03-22 | 2004-03-25 | 59 | 18.25d | 0d | Technische Autoren | 24h |
| 61 | 7.4 | Einarbeiten des Feedbacks zur Hilfedokumentation |  | 2d | 2004-03-25 | 2004-03-29 | 60 | 18.25d | 0d | Technische Autoren | 16h |
| 62 | 7.5 | Entwickeln der Vorgaben für die Benutzerhandbücher |  | 2d | 2004-02-16 | 2004-02-17 | 24 | 27.75d | 8.5d | Technische Autoren | 16h |
| 63 | 7.6 | Schreiben der Benutzerhandbücher |  | 3w | 2004-03-01 | 2004-03-22 | 62, 29FS-5% | 19.25d | 0d | Technische Autoren | 120h |
| 64 | 7.7 | Beurteilen der gesamten Benutzerdokumentation |  | 2d | 2004-03-22 | 2004-03-24 | 63 | 19.25d | 0d | Technische Autoren | 16h |
| 65 | 7.8 | Einarbeiten des Feedbacks zur Benutzerdokumentation |  | 2d | 2004-03-24 | 2004-03-26 | 64 | 19.25d | 1d | Technische Autoren | 16h |
| 66 | 7.9 | Dokumentation ist abgeschlossen | milestone | 0d | 2004-03-29 | 2004-03-29 | 65, 61 | 18.25d |  |  |  |
| 67 | 8 | **Pilotphase** |  | 70.25d | 2004-01-26 | 2004-05-03 |  | 0d |  |  | 64h |
| 68 | 8.1 | Bestimmen der Testgruppe |  | 1d | 2004-01-26 | 2004-01-27 | 16 | 61.25d | 0d | Projektmanager | 8h |
| 69 | 8.2 | Entwickeln des Mechanismus zur Softwareverteilung |  | 1d | 2004-01-27 | 2004-01-28 | 68 | 61.25d |  |  |  |
| 70 | 8.3 | Installieren/Bereitstellen der Software |  | 1d | 2004-04-22 | 2004-04-23 | 47, 69, 66, 56 | 0d |  | Bereitstellungsteam | 8h |
| 71 | 8.4 | Sammeln des Benutzerfeedbacks |  | 1w | 2004-04-23 | 2004-04-30 | 70 | 0d |  | Bereitstellungsteam | 40h |
| 72 | 8.5 | Auswerten der beim Testen gesammelten Informationen |  | 1d | 2004-04-30 | 2004-05-03 | 71 | 0d |  | Bereitstellungsteam | 8h |
| 73 | 8.6 | Pilotphase ist abgeschlossen | milestone | 0d | 2004-05-03 | 2004-05-03 | 72 | 0d |  |  |  |
| 74 | 9 | **Bereitstellung** |  | 5d | 2004-05-03 | 2004-05-10 |  | 0d |  |  | 40h |
| 75 | 9.1 | Festlegen der endgültigen Bereitstellungsstrategie |  | 1d | 2004-05-03 | 2004-05-04 | 73 | 0d |  | Bereitstellungsteam | 8h |
| 76 | 9.2 | Entwickeln der Bereitstellungsmethodik |  | 1d | 2004-05-04 | 2004-05-05 | 75 | 0d |  | Bereitstellungsteam | 8h |
| 77 | 9.3 | Einteilen der Bereitstellungsressourcen |  | 1d | 2004-05-05 | 2004-05-06 | 76 | 0d |  | Bereitstellungsteam | 8h |
| 78 | 9.4 | Schulen des Software Service-Personals |  | 1d | 2004-05-06 | 2004-05-07 | 77 | 0d |  | Bereitstellungsteam | 8h |
| 79 | 9.5 | Bereitstellen der Software |  | 1d | 2004-05-07 | 2004-05-10 | 78 | 0d |  | Bereitstellungsteam | 8h |
| 80 | 9.6 | Bereitstellung ist abgeschlossen | milestone | 0d | 2004-05-10 | 2004-05-10 | 79 | 0d |  |  |  |

| ID | WBS | Task | Type | Duration | Start | Finish | Predecessors | Total slack | Resources | Work |
| --- | --- | --- | --- | --- | --- | --- | --- | --- | --- | --- |
| 81 | 10 | **Nachbereitung der Implementierung** |  | 3d | 2004-05-10 | 2004-05-13 |  | 0d |  | 24h |
| 82 | 10.1 | Dokumentieren des Erfahrungsberichts |  | 1d | 2004-05-10 | 2004-05-11 | 80 | 0d | Projektmanager | 8h |
| 83 | 10.2 | Verteilen an die Teammitglieder |  | 1d | 2004-05-11 | 2004-05-12 | 82 | 0d | Projektmanager | 8h |
| 84 | 10.3 | Zusammenstellen des Softwarewartungsteams |  | 1d | 2004-05-12 | 2004-05-13 | 83 | 0d | Projektmanager | 8h |
| 85 | 10.4 | Nachbereitung der Implementierung ist abgeschlossen | milestone | 0d | 2004-05-13 | 2004-05-13 | 84 | 0d |  |  |
| 86 | 11 | Vorlage für Softwareentwicklung ist abgeschlossen | milestone | 0d | 2004-05-13 | 2004-05-13 | 85 | 0d |  |  |
